# FREEDOM TELECOM - POC

| id | name | duration | baselineStart | baselineFinish | start | finish | percentComplete | level | resources | predecessors | comments | deliverable |
| --- | --- | --- | --- | --- | --- | --- | --- | --- | --- | --- | --- | --- |
| 1 | FREEDOM TELECOM - POC | 163 days | Fri 5/8/26 | Fri 11/13/26 | Fri 5/8/26 | Tue 12/22/26 | 19% | 1 |  |  |  |  |
| 2 | PHASE-I | 63 days | Fri 5/8/26 | Fri 6/26/26 | Fri 5/8/26 | Tue 8/4/26 | 27% | 2 |  |  |  |  |
| 3 | Procurement Management | 12 days | Fri 5/8/26 | Mon 5/25/26 | Fri 5/8/26 | Mon 5/25/26 | 100% | 3 |  |  |  |  |
| 15 | Project Planning | 10 days | Mon 5/11/26 | Fri 5/22/26 | Mon 5/11/26 | Fri 5/22/26 | 100% | 3 |  |  |  |  |
| 28 | Requirements Input | 20 days | Mon 5/18/26 | Fri 5/29/26 | Mon 5/18/26 | Fri 6/12/26 | 96% | 3 |  |  |  |  |
| 29 | Architecture Design | 20 days | Mon 5/18/26 | Fri 5/29/26 | Mon 5/18/26 | Fri 6/12/26 | 96% | 4 |  |  |  |  |
| 30 | HLD(Interconnection /Architecture diagram) | 4 days | Mon 5/18/26 | Thu 5/21/26 | Mon 5/18/26 | Thu 5/21/26 | 100% | 5 |  |  |  |  |
| 37 | LLD - P1&P2 (Call flows IP design) | 16 days | Fri 5/22/26 | Mon 5/25/26 | Fri 5/22/26 | Fri 6/12/26 | 94% | 5 |  |  |  |  |
| 38 | Analyze requirements derived from the HLD | 1 day | Fri 5/22/26 | Fri 5/22/26 | Fri 5/22/26 | Fri 5/22/26 | 100% | 6 | XIUS -I&I(Divya) | 36 |  |  |
| 39 | Create detailed IP call flow | 12 days | Fri 5/22/26 | Fri 5/22/26 | Fri 5/22/26 | Mon 6/8/26 | 100% | 6 | XIUS -I&I(Divya) | 36 |  |  |
| 40 | Validate LLD content with stakeholders | 1 day | Fri 5/22/26 | Fri 5/22/26 | Tue 6/9/26 | Tue 6/9/26 | 100% | 6 | XIUS -I&I(Divya) | 39 |  |  |
| 41 | Adjust content and technical notes (if needed) | 1 day | Mon 5/25/26 | Mon 5/25/26 | Wed 6/10/26 | Wed 6/10/26 | 100% | 6 | XIUS -I&I(Divya) | 40 |  |  |
| 42 | Request LLD approval | 1 day | Mon 5/25/26 | Mon 5/25/26 | Thu 6/11/26 | Thu 6/11/26 | 100% | 6 | XIUS(Alejandro) | 41 |  |  |
| 43 | Approval LLD | 1 day | Mon 5/25/26 | Mon 5/25/26 | Fri 6/12/26 | Fri 6/12/26 | 0% | 6 | FT (Konstantin) | 42 |  |  |
| 44 | Infrastructure readiness | 24 days | Mon 5/18/26 | Fri 5/29/26 | Mon 5/18/26 | Thu 6/18/26 | 89% | 3 |  |  |  |  |
| 45 | Installation Racks | 2 days | Mon 5/18/26 | Tue 5/19/26 | Mon 5/18/26 | Tue 5/19/26 | 100% | 4 |  |  |  |  |
| 48 | Installation servers | 1 day | Wed 5/20/26 | Wed 5/20/26 | Wed 5/20/26 | Wed 5/20/26 | 100% | 4 |  |  |  |  |
| 50 | Installation electrical cabling | 3 days | Thu 5/21/26 | Mon 5/25/26 | Thu 5/21/26 | Mon 5/25/26 | 100% | 4 |  |  |  |  |
| 54 | Installation UTP cabling | 1 day | Tue 5/26/26 | Tue 5/26/26 | Tue 5/26/26 | Tue 5/26/26 | 100% | 4 |  |  |  |  |
| 58 | Rack powered | 1 day | Wed 5/27/26 | Wed 5/27/26 | Wed 5/27/26 | Wed 5/27/26 | 100% | 4 | FT (Konstantin) | 57 |  |  |
| 59 | Installation OS | 1 day | Thu 5/28/26 | Thu 5/28/26 | Thu 5/28/26 | Thu 5/28/26 | 100% | 4 | FT (Konstantin) | 58 |  |  |
| 60 | Hypervisor Installation& configuration (VMWare ESXi 8.0.3D) | 1 day | Fri 5/29/26 | Fri 5/29/26 | Fri 5/29/26 | Fri 5/29/26 | 100% | 4 | FT (Konstantin) | 59 |  |  |
| 61 | VM Creation(Allocating RAM,Storage,CPUs) | 1 day | Fri 5/29/26 | Fri 5/29/26 | Fri 5/29/26 | Fri 5/29/26 | 100% | 4 |  |  |  |  |
| 64 | IP address assignment | 22 days | Mon 5/18/26 | Wed 5/20/26 | Mon 5/18/26 | Tue 6/16/26 | 67% | 4 |  |  |  |  |
| 65 | Request IP addressing plan | 1 day | Mon 5/18/26 | Mon 5/18/26 | Mon 5/18/26 | Mon 5/18/26 | 100% | 5 | XIUS(Alejandro) |  |  |  |
| 66 | Delivery IP configuration | 1 day | Tue 5/19/26 | Tue 5/19/26 | Mon 6/15/26 | Mon 6/15/26 | 100% | 5 | FT(Konstantin) | 43 |  |  |
| 67 | Config static IPs to VMs (management, internal, external) | 1 day | Wed 5/20/26 | Wed 5/20/26 | Tue 6/16/26 | Tue 6/16/26 | 0% | 5 | FT(Konstantin) | 66 |  |  |
| 68 | Config Internal Network between VMs | 1 day | Thu 5/21/26 | Thu 5/21/26 | Wed 6/17/26 | Wed 6/17/26 | 0% | 4 | FT(Konstantin) | 67 |  |  |
| 69 | Config External Network (to core elements | 1 day | Fri 5/22/26 | Fri 5/22/26 | Thu 6/18/26 | Thu 6/18/26 | 0% | 4 | FT(Konstantin) | 68 |  |  |
| 70 | VPN setup and access | 8 days | Mon 5/18/26 | Wed 5/27/26 | Mon 5/18/26 | Wed 5/27/26 | 100% | 4 |  |  |  |  |
| 78 | Milestone: Infrastructure readiness – Resources , connectivity , oth | 0e rdsays | Fri 5/29/26 | Fri 5/29/26 | Thu 6/18/26 | Thu 6/18/26 | 80% | 4 | XIUS(Alejandro) | 69 | Pending deliverable | Signed configuration |
| 79 | Implementation | 6 days | Mon 6/1/26 | Fri 6/5/26 | Fri 6/19/26 | Fri 6/26/26 | 0% | 3 |  |  |  |  |
| 80 | Software installation | 6 days | Mon 6/1/26 | Fri 6/5/26 | Fri 6/19/26 | Fri 6/26/26 | 0% | 4 |  |  |  |  |
| 81 | Database | 5 days | Mon 6/1/26 | Wed 6/3/26 | Fri 6/19/26 | Thu 6/25/26 | 0% | 5 |  |  |  |  |
| 82 | Installation &Configuration of database server(Postgres) | 2 days | Mon 6/1/26 | Tue 6/2/26 | Fri 6/19/26 | Mon 6/22/26 | 0% | 6 |  |  |  |  |
| 83 | Verify hardware and operating system compatibility with Postgres versions | 1 day | Mon 6/1/26 | Mon 6/1/26 | Fri 6/19/26 | Fri 6/19/26 | 0% | 7 | XIUS-DBA(Rajaneesh) | 69 | Approved by Rajaneesh |  |
| 84 | Install OS dependencies and necessary security patches | 1 day | Tue 6/2/26 | Tue 6/2/26 | Mon 6/22/26 | Mon 6/22/26 | 0% | 7 | XIUS-DBA(Rajaneesh) | 83 | Approved by Rajaneesh |  |
| 85 | Install database server software (Postgres) | 1 day | Tue 6/2/26 | Tue 6/2/26 | Mon 6/22/26 | Mon 6/22/26 | 0% | 7 | XIUS-DBA(Rajaneesh) | 83 | Approved by Rajaneesh |  |
| 86 | Configure database instance parameters (memory allocation, storage paths, user roles) | 1 day | Tue 6/2/26 | Tue 6/2/26 | Mon 6/22/26 | Mon 6/22/26 | 0% | 7 | XIUS-DBA(Rajaneesh) | 83 | Approved by Rajaneesh |  |
| 87 | Test connectivity, backup config, and apply performance tuning (if necessary) | 1 day | Tue 6/2/26 | Tue 6/2/26 | Mon 6/22/26 | Mon 6/22/26 | 0% | 7 | XIUS-DBA(Rajaneesh) | 83 | Approved by Rajaneesh |  |
| 88 | Installation Database clients in all VM's | 2 days | Tue 6/2/26 | Wed 6/3/26 | Tue 6/23/26 | Wed 6/24/26 | 0% | 6 |  |  |  |  |
| 89 | Identify target VMs and validate OS prerequisites | 2 days | Tue 6/2/26 | Tue 6/2/26 | Tue 6/23/26 | Wed 6/24/26 | 0% | 7 | XIUS-DBA(Rajaneesh) | 87 | Approved by Rajaneesh |  |
| 90 | Distribute database client installation packages | 2 days | Wed 6/3/26 | Wed 6/3/26 | Tue 6/23/26 | Wed 6/24/26 | 0% | 7 | XIUS-DBA(Rajaneesh) |  | Approved by Rajaneesh |  |
| 91 | Install database clients on each VM | 2 days | Wed 6/3/26 | Wed 6/3/26 | Tue 6/23/26 | Wed 6/24/26 | 0% | 6 | XIUS-DBA(Rajaneesh) |  | Approved by Rajaneesh |  |
| 92 | Configure connection parameters for each client (host, port, service name) | 2 days | Wed 6/3/26 | Wed 6/3/26 | Tue 6/23/26 | Wed 6/24/26 | 0% | 7 | XIUS-DBA(Rajaneesh) |  | Approved by Rajaneesh |  |
| 93 | Test database connectivity from each VM and troubleshoot any issues | 2 days | Wed 6/3/26 | Wed 6/3/26 | Tue 6/23/26 | Wed 6/24/26 | 0% | 7 | XIUS-DBA(Rajaneesh) |  | Approved by Rajaneesh |  |
| 94 | Simulator | 1 day | NA | NA | Thu 6/25/26 | Thu 6/25/26 | 0% | 6 |  |  |  |  |
| 95 | Voice Call | 1 day | NA | NA | Thu 6/25/26 | Thu 6/25/26 | 0% | 7 | XIUS -I&I(Shakeel) | 93 | OK |  |
| 96 | Data Call | 1 day | NA | NA | Thu 6/25/26 | Thu 6/25/26 | 0% | 9 | XIUS -I&I(Shakeel) | 93 | OK |  |
| 97 | BSS | 2 days | Thu 6/4/26 | Thu 6/4/26 | Thu 6/25/26 | Fri 6/26/26 | 0% | 5 |  |  |  |  |
| 98 | Install & Configure Customer Care | 2 days | Thu 6/4/26 | Thu 6/4/26 | Thu 6/25/26 | Fri 6/26/26 | 0% | 6 | XIUS -I&I(Saibaba) | 93 | Approved by Saibaba |  |
| 99 | Tariff Plans configuration | 2 days | Thu 6/4/26 | Thu 6/4/26 | Thu 6/25/26 | Fri 6/26/26 | 0% | 6 | XIUS -I&I(Banhu) | 93 | Approved by Banhu |  |
| 100 | Install & Configure Provisioning | 2 days | Thu 6/4/26 | Thu 6/4/26 | Thu 6/25/26 | Fri 6/26/26 | 0% | 6 | XIUS -I&I(Saibaba) | 93 | Approved by Saibaba |  |
| 101 | Install & Configure Rating & Charging | 2 days | Thu 6/4/26 | Thu 6/4/26 | Thu 6/25/26 | Fri 6/26/26 | 0% | 6 | XIUS -I&I(Saibaba) | 93 | Approved by Saibaba |  |
| 102 | Install & Configure Reporting | 2 days | Thu 6/4/26 | Thu 6/4/26 | Thu 6/25/26 | Fri 6/26/26 | 0% | 6 | XIUS -I&I(Saibaba) | 93 | Approved by Saibaba |  |
| 103 | Install & Configure SIM Management | 2 days | Thu 6/4/26 | Thu 6/4/26 | Thu 6/25/26 | Fri 6/26/26 | 0% | 6 | XIUS -I&I(Saibaba) | 93 | Approved by Saibaba |  |
| 104 | Install & Configure User Management | 2 days | Thu 6/4/26 | Thu 6/4/26 | Thu 6/25/26 | Fri 6/26/26 | 0% | 6 | XIUS -I&I(Saibaba) | 93 | Approved by Saibaba |  |
| 105 | Install & Configure Self Care | 2 days | Thu 6/4/26 | Thu 6/4/26 | Thu 6/25/26 | Fri 6/26/26 | 0% | 6 | XIUS -I&I(Saibaba) | 93 | Approved by Saibaba |  |
| 106 | Core | 2 days | Fri 6/5/26 | Fri 6/5/26 | Thu 6/25/26 | Fri 6/26/26 | 0% | 5 |  |  |  |  |
| 107 | Install & Configure VRE(Voice Response Element) | 2 days | Fri 6/5/26 | Fri 6/5/26 | Thu 6/25/26 | Fri 6/26/26 | 0% | 6 | XIUS -I&I(Shakeel) | 93 | Approved by Shakeel |  |
| 108 | Install & Configure SRE(Service Routing Engine) | 2 days | Fri 6/5/26 | Fri 6/5/26 | Thu 6/25/26 | Fri 6/26/26 | 0% | 6 | XIUS -I&I(Shakeel) | 93 | Approved by Shakeel |  |
| 109 | Install & Configure DRE(Diameter Routing Engine) | 2 days | Fri 6/5/26 | Fri 6/5/26 | Thu 6/25/26 | Fri 6/26/26 | 0% | 6 | XIUS -I&I(Shakeel) | 93 | Approved by Shakeel |  |
| 110 | Install & Configure DRA Gx,Gy,Ro | 2 days | Fri 6/5/26 | Fri 6/5/26 | Thu 6/25/26 | Fri 6/26/26 | 0% | 6 | XIUS -I&I(Shakeel) | 93 | Approved by Shakeel |  |
| 111 | Install & Configure PCRF(Policy and Charging Rules Function) | 2 days | Fri 6/5/26 | Fri 6/5/26 | Thu 6/25/26 | Fri 6/26/26 | 0% | 6 | XIUS -I&I(Shakeel) | 93 | Approved by Shakeel |  |
| 112 | Install & Configure DCCS(Data Charging and Control System) | 2 days | Fri 6/5/26 | Fri 6/5/26 | Thu 6/25/26 | Fri 6/26/26 | 0% | 6 | XIUS -I&I(Shakeel) | 93 | Approved by Shakeel |  |
| 113 | Milestone: Testbed – Module Implementation | 0 days | Fri 6/5/26 | Fri 6/5/26 | Fri 6/26/26 | Fri 6/26/26 | 0% | 6 | XIUS(Alejandro) | 112 | Approved by Shakeel | Testbed Implementa |
| 114 | Integration | 9 days | Mon 6/8/26 | Fri 6/12/26 | Mon 6/29/26 | Thu 7/9/26 | 0% | 3 |  |  |  |  |
| 115 | Integration with internal/external systems | 8 days | Mon 6/8/26 | Fri 6/12/26 | Mon 6/29/26 | Wed 7/8/26 | 0% | 4 |  |  |  |  |
| 116 | Internal | 8 days | Mon 6/8/26 | Fri 6/12/26 | Mon 6/29/26 | Wed 7/8/26 | 0% | 5 |  |  |  |  |
| 117 | DRA Gx,Gy,Ro | 1 day | Mon 6/8/26 | Mon 6/8/26 | Mon 6/29/26 | Mon 6/29/26 | 0% | 6 |  |  |  |  |

| id | name | duration | baselineStart | baselineFinish | start | finish | percentComplete | level | resources | predecessors | comments | deliverable |
| --- | --- | --- | --- | --- | --- | --- | --- | --- | --- | --- | --- | --- |
| 122 | PCRF(Policy and Charging Rules Function) | 1 day | Tue 6/9/26 | Tue 6/9/26 | Tue 6/30/26 | Tue 6/30/26 | 0% | 6 |  |  |  |  |
| 128 | DCCS(Data Charging and Control System) | 1 day | Tue 6/9/26 | Tue 6/9/26 | Wed 7/1/26 | Wed 7/1/26 | 0% | 6 |  |  |  |  |
| 134 | Simulator | 2 days | NA | NA | Thu 7/2/26 | Fri 7/3/26 | 0% | 6 |  |  |  |  |
| 135 | Voice Call | 2 days | NA | NA | Thu 7/2/26 | Fri 7/3/26 | 0% | 7 | XIUS -I&I(Shakeel) | 133 | Approved by Shakeel |  |
| 136 | Data Call | 2 days | NA | NA | Thu 7/2/26 | Fri 7/3/26 | 0% | 7 | XIUS -I&I(Shakeel) | 133 | Approved by Shakeel |  |
| 137 | API Integration | 5 days | Mon 6/8/26 | Fri 6/12/26 | Thu 7/2/26 | Wed 7/8/26 | 0% | 6 |  |  |  |  |
| 141 | External | 1 day | Fri 6/12/26 | Fri 6/12/26 | Thu 7/2/26 | Thu 7/2/26 | 0% | 5 |  |  |  |  |
| 142 | Integration | 1 day | Fri 6/12/26 | Fri 6/12/26 | Thu 7/2/26 | Thu 7/2/26 | 0% | 6 | XIUS -I&I (Divya) | 133 | Approved by Divya |  |
| 143 | Flow validation between platforms | 1 day | Fri 6/12/26 | Fri 6/12/26 | Thu 7/9/26 | Thu 7/9/26 | 0% | 4 |  |  |  |  |
| 144 | Request Integration tests | 1 day | Fri 6/12/26 | Fri 6/12/26 | Thu 7/9/26 | Thu 7/9/26 | 0% | 5 | XIUS(Alejandro) | 140 |  |  |
| 145 | Run integration tests | 1 day | Fri 6/12/26 | Fri 6/12/26 | Thu 7/9/26 | Thu 7/9/26 | 0% | 5 | XIUS -I&I (Divya) | 140 |  |  |
| 146 | Testing | 23 days | Mon 6/8/26 | Fri 6/26/26 | Fri 7/3/26 | Tue 8/4/26 | 0% | 3 |  |  |  |  |
| 147 | Functional testing and ATP | 23 days | Mon 6/8/26 | Fri 6/26/26 | Fri 7/3/26 | Tue 8/4/26 | 0% | 4 |  |  |  |  |
| 148 | Pre-UAT | 9 days | Mon 6/8/26 | Thu 6/11/26 | Fri 7/3/26 | Wed 7/15/26 | 0% | 5 |  |  |  |  |
| 161 | Execute UAT | 14 days | Fri 6/12/26 | Fri 6/26/26 | Thu 7/16/26 | Tue 8/4/26 | 0% | 5 |  |  |  |  |
| 162 | OCS,Billing & BSS Test Cases | 5 days | Fri 6/12/26 | Thu 6/18/26 | Thu 7/16/26 | Wed 7/22/26 | 0% | 6 | FT(Konstantin) |  | Approved by Konstantin |  |
| 211 | Dealer Management Test Cases | 2 days | Fri 6/19/26 | Mon 6/22/26 | Thu 7/23/26 | Fri 7/24/26 | 0% | 6 | FT(Konstantin) |  |  |  |
| 222 | CRM Test cases | 2 days | Tue 6/23/26 | Wed 6/24/26 | Mon 7/27/26 | Tue 7/28/26 | 0% | 6 | FT(Konstantin) |  |  |  |
| 232 | Ticketing Test cases | 1 day | Thu 6/25/26 | Thu 6/25/26 | Wed 7/29/26 | Wed 7/29/26 | 0% | 6 | FT(Konstantin) |  |  |  |
| 236 | PCRF Test cases | 2 days | Tue 6/23/26 | Wed 6/24/26 | Thu 7/30/26 | Fri 7/31/26 | 0% | 6 | FT(Konstantin) |  |  |  |
| 246 | Troubleshooting | 2 days | Thu 6/25/26 | Fri 6/26/26 | Mon 8/3/26 | Tue 8/4/26 | 0% | 6 | XIUS-I&I (Divya) | 245 |  |  |
| 247 | Milestone: Testbed – End user testing | 0 days | Fri 6/26/26 | Fri 6/26/26 | Tue 8/4/26 | Tue 8/4/26 | 0% | 4 | XIUS(Alejandro) | 246 | Pending deliverable | Xius document Viva_ |
| 248 | Phase-II | 100 days | Mon 6/29/26 | Fri 11/13/26 | Wed 8/5/26 | Tue 12/22/26 | 0% | 2 |  |  |  |  |
